# Implementacja architektury dla firmy

Schedule from MS Project, 2019-05-13 to 2020-03-02, costs in zł.

## Calendars

- Standard: Mon-Fri 08:00-12:00, 13:00-17:00; Sat-Sun off.

## Resources

| Resource | Group | Unit | Rate | Cost per use |
| --- | --- | --- | --- | --- |
| Elektryk Tomek |  |  |  |  |
| Kamera |  | 1 | 400 | 400 |
| Aranżacja wnętrz |  |  | 35000 |  |
| Administrator |  |  | 120 |  |
| Administrator Junior |  |  | 50 |  |
| Budowlaniec 1 | Budowa |  | 30 |  |
| Budowlaniec 2 | Budowa |  | 30 |  |
| Budowlaniec 3 | Budowa |  | 30 |  |
| Hydraulik Mariusz |  |  | 40 |  |
| Pomocnik Murarza |  |  | 15 |  |
| Murarz - Szpachlarz | Maszyny |  | 25 |  |
| Operator maszyn 1 | Maszyny |  | 16 |  |
| Operator maszyn 2 | Maszyny |  | 16 |  |
| Operator maszyn 3 | Maszyny |  | 16 |  |
| Tynkarz |  |  | 37 |  |
| Kominiarz |  |  |  |  |
| Wykonanie wentylacji |  |  |  |  |
| Serwer |  |  | 3000 |  |
| Meble |  |  | 40000 |  |
| Internet |  |  | 1500 |  |
| Pomocnik 1 | Pomocnicy |  | 10 |  |
| Pomocnik 2 | Pomocnicy |  | 10 |  |
| Pomocnik 3 | Pomocnicy |  | 10 |  |
| Pomocnik 4 | Pomocnicy |  | 12 |  |
| Pomocnik 5 | Pomocnicy |  | 12 |  |
| Zakup działki |  |  | 450000 |  |
| Pozwolenia |  |  | 3000 |  |
| Fundament materiał |  |  | 21950 |  |
| Wykonanie fundamentów |  |  | 8000 |  |
| Glazura |  |  |  |  |
| Hosting |  | rocznie | 120 |  |
| Domena |  | rocznie | 200 |  |
| Informatyk student |  |  | 25 |  |
| Malarz 1 |  |  | 22 |  |
| Malarz 2 |  |  | 22 |  |
| Malarz 3 |  |  | 22 |  |
| Malarz 4 |  |  | 22 |  |
| Malarz 5 |  |  | 22 |  |
| Montaż alarm |  |  | 3062 |  |
| Centralka alarmowa |  |  | 1500 |  |
| czujnik |  | 1 szt. |  |  |
| Instalacja elektryczna |  |  | 8000 |  |
| Komputery i oprogramowanie |  |  | 120000 |  |
| Okablowanie |  |  | 6000 |  |
| Router ac |  | 1 szt. | 350 |  |
| Programista |  |  | 80 |  |
| Front-End |  |  | 60 |  |
| Hydraulik Wojtek |  |  | 35 |  |
| Ściany malowanie |  |  | 30000 |  |
| ŁAZIENKA Sanitaria |  |  | 3200 |  |
| ŁAZIENKA Wyposażenie |  |  | 2150 |  |
| ŁAZIENKA glazura |  |  | 1233 |  |
| KUCHNIA Wyposażenie |  |  | 12000 |  |
| KUCHNIA wykończenie |  |  | 3100 |  |
| Okna |  |  | 3500 |  |
| Drzwi wewnętrzne |  | 1 szt. | 5600 |  |
| Drzwi zewnętrzne |  |  | 3500 |  |
| Montaż |  |  |  | 40 |
| Monter |  |  | 15 |  |
| Okablowanie i instalacja |  |  |  | 12000 |
| Programista Junior |  |  | 35 |  |
| Dach |  |  | 33000 |  |
| Wynajem betoniarki |  | 24h | 18 |  |
| Budowlaniec murarz |  |  |  |  |
| Budowlaniec murarz |  |  |  |  |
| Wykonanie ściany |  |  | 6600 |  |
| Ściana materiały |  |  | 18520 |  |
| Wynajem koparki |  |  | 120 |  |
| Wynajem Dźwig |  |  | 180 |  |
| Farba |  |  | 500 |  |
| Szatnia - meble |  |  | 12000 |  |
| Klimatyzacja |  |  | 10000 |  |
| Instalacja klimatyzacji |  |  | 3500 |  |
| Ogrzewanie |  |  | 50000 |  |
| Tynkowanie materiał |  |  |  |  |
| Ściany działowe |  |  | 12500 |  |
| Kominy |  |  | 15000 |  |
| Strop |  |  | 75000 |  |
| PPOZ |  |  | 3500 |  |
| Biuro MEBLE |  |  | 28000 |  |
| Sprzęt sieciowy |  |  | 22000 |  |
| Tynk |  |  | 8000 |  |
| Szatnia wyposażenie |  |  | 9000 |  |
| Sąsiadka |  |  |  |  |
| Koordynator |  |  | 60 |  |
| Biurka |  |  |  | 2400 |
| Szkoleniowiec |  |  | 24 |  |

## Schedule

| ID | WBS | Task | Type | Duration | Start | Finish | Predecessors | Total slack | Free slack | Resources | Work | Cost |
| --- | --- | --- | --- | --- | --- | --- | --- | --- | --- | --- | --- | --- |
| 1 | 1 | **Budowa placówki firmy (150)** |  | 147d | 2019-05-13 | 2019-12-03 |  | -18d | 0d |  | 2864h | 871,878 |
| 2 | 1.1 | Zakup działki 6 arów |  | 20d | 2019-05-13 | 2019-06-07 |  | -18d | 0d | Zakup działki |  | 450,000 |
| 3 | 1.2 | Zdobycie potrzebnych pozwoleń |  | 45d | 2019-06-10 | 2019-08-09 | 2 | -18d | 0d | Pozwolenia |  | 3,000 |
| 4 | 1.3 | Wykopanie ziemi |  | 6d | 2019-08-12 | 2019-08-19 | 3 | -18d | 0d | Budowlaniec 1; Budowlaniec 2; Budowlaniec 3; Operator maszyn 1; Operator maszyn 2; Pomocnik 1; Pomocnik 2; Pomocnik 3; Wynajem koparki | 432h | 13,056 |
| 5 | 1.4 | Wylanie fundamentów |  | 10d | 2019-08-20 | 2019-09-02 | 4 | -18d | 0d | Budowlaniec 1; Budowlaniec 2; Budowlaniec 3; Operator maszyn 1; Operator maszyn 2; Operator maszyn 3; Pomocnik 1; Pomocnik 2; Pomocnik 5; Wykonanie fundamentów; Wynajem betoniarki [1 24h] | 800h | 23,040 |
| 6 | 1.5 | Stawianie ścian |  | 15d | 2019-09-03 | 2019-09-23 | 5 | -18d | 0d | Wykonanie ściany; Ściana materiały; Ściany działowe |  | 37,620 |
| 7 | 1.6 | Komin |  | 3d | 2019-09-03 | 2019-09-05 | 5 | 127d |  | Kominy |  | 15,000 |
| 8 | 1.7 | Założenie zadaszenia |  | 10d | 2019-09-24 | 2019-10-07 | 6 | -18d | 0d | Budowlaniec 1; Budowlaniec 2; Budowlaniec 3; Pomocnik 1; Dach; Wynajem Dźwig [50%]; Strop | 360h | 123,200 |
| 9 | 1.8 | Instalacja okablowania i prądu |  | 5d | 2019-10-08 | 2019-10-14 | 8 | -18d | 0d | Elektryk Tomek; Pomocnik 5; Pomocnik 2; Pomocnik 1; Instalacja elektryczna [300%] | 160h | 25,280 |
| 10 | 1.9 | Instalacja wodociągowa i grzewcza |  | 16d | 2019-10-15 | 2019-11-05 | 9 | -18d | 0d | Hydraulik Mariusz; Ogrzewanie | 128h | 55,120 |
| 11 | 1.10 | Tynkowanie |  | 15d | 2019-11-06 | 2019-11-26 | 10 | -18d | 0d | Murarz - Szpachlarz; Tynkarz; Tynk | 240h | 15,440 |
| 12 | 1.11 | Montaż okien i drzwi |  | 4d | 2019-11-27 | 2019-12-02 | 11 | 65d |  | Budowlaniec 1; Budowlaniec 2; Budowlaniec 3; Drzwi zewnętrzne; Okna | 96h | 9,880 |
| 13 | 1.12 | Instalacja klimatyzacji |  | 5d | 2019-11-27 | 2019-12-03 | 11 | -18d | 0d | Instalacja klimatyzacji; Klimatyzacja |  | 13,500 |
| 14 | 1.13 | Wybudowano budynek | milestone | 0d | 2019-12-03 | 2019-12-03 | 13 | -18d | 0d |  |  |  |
| 15 | 1.14 | **Zakup i planowanie materiałów wnętrz** |  | 16d | 2019-05-13 | 2019-06-03 |  | 116d |  | Pomocnik 1; Pomocnik 2; Pomocnik 3; Pomocnik 4; Pomocnik 5 | 648h | 87,742 |
| 16 | 1.14.1 | Projekt wnętrz |  | 12d | 2019-05-13 | 2019-05-28 |  | 116d | 0d | Aranżacja wnętrz |  | 35,000 |
| 17 | 1.14.2 | Zatwierdzenie projektu |  | 1d | 2019-05-29 | 2019-05-29 | 16 | 116d | 0d | Front-End | 8h | 480 |
| 18 | 1.14.3 | Wyposażenie łazienkowe |  | 3d | 2019-05-30 | 2019-06-03 | 17 | 195d |  | ŁAZIENKA Wyposażenie; ŁAZIENKA Sanitaria |  | 5,350 |
| 19 | 1.14.4 | Wyposażenie biuro |  | 2d | 2019-05-13 | 2019-05-14 |  | 209d |  | Biuro MEBLE |  | 28,000 |
| 20 | 1.14.5 | Wyposażenie szatni |  | 3d | 2019-05-30 | 2019-06-03 | 17 | 195d |  | Szatnia - meble |  | 12,000 |
| 21 | 2 | **Przygotowanie wnętrz** |  | 40.75d? | 2019-11-08 | 2020-01-03 | 17, 14 |  |  |  | 655h | 73,592 |
| 22 | 2.1 | Tryskacze i ochrona przeciwpożarowa |  | 1d | 2019-11-08 | 2019-11-08 |  | 81d |  | PPOZ |  | 3,500 |
| 23 | 2.2 | Glazura |  | 10d | 2019-11-08 | 2019-11-21 |  | 72d |  | ŁAZIENKA glazura |  | 1,233 |
| 24 | 2.3 | Malowanie ścian |  | 4d | 2019-11-08 | 2019-11-13 |  | 73d | 0d | Malarz 1; Malarz 2; Malarz 3; Malarz 4; Malarz 5; Farba | 160h | 4,020 |
| 25 | 2.4 | Alarm pożarowy, telefon, kamery |  | 3d | 2019-11-14 | 2019-11-18 | 24 | 75d |  | Kamera [1 1]; Montaż; Monter; Montaż alarm | 48h | 4,262 |
| 26 | 2.5 | Łazienka |  | 5d | 2019-11-14 | 2019-11-20 | 24 | 73d |  | Pomocnik 3; Pomocnik 4; Hydraulik Mariusz; Hydraulik Wojtek | 160h | 3,880 |
| 27 | 2.6 | Biuro |  | 5d | 2019-11-14 | 2019-11-20 | 24 | 73d |  | Pomocnik 1; Pomocnik 5 | 80h | 880 |
| 28 | 2.7 | Szatnia |  | 3d | 2019-11-14 | 2019-11-18 | 24 | 75d |  | Pomocnik 2 | 24h | 240 |

| ID | WBS | Task | Type | Duration | Start | Finish | Predecessors | Total slack | Free slack | Resources | Work | Cost |
| --- | --- | --- | --- | --- | --- | --- | --- | --- | --- | --- | --- | --- |
| 29 | 2.8 | **Pracownia** |  | 16.25d | 2019-11-08 | 2019-12-02 |  | 0d |  |  | 183h | 55,577 |
| 30 | 2.8.1 | **Projekt pracowni** |  | 16.25d | 2019-11-08 | 2019-12-02 |  | 0d |  |  | 183h | 55,577 |
| 31 | 2.8.1.1 | Przygotowanie projektu i materiałów dla pracowni |  | 1d | 2019-11-08 | 2019-11-08 |  | 0d |  | Administrator; Administrator Junior; Koordynator | 24h | 1,840 |
| 32 | 2.8.1.2 | Opracowanie schematu projektu sieci |  | 2d | 2019-11-11 | 2019-11-12 | 31 | 0d |  | Administrator; Administrator Junior | 32h | 2,720 |
| 33 | 2.8.1.3 | Zakup materiałow do budowy instalacji sieci |  | 2h | 2019-11-15 | 2019-11-15 | 42 | 0d |  | Okablowanie i instalacja | 2h | 12,000 |
| 34 | 2.8.1.4 | Porównanie ofert ISP |  | 1h | 2019-11-11 | 2019-11-11 | 32SS | 79.38d | 0d |  |  |  |
| 35 | 2.8.1.5 | Zatwierdzenie wyboru |  | 2h | 2019-11-11 | 2019-11-11 | 34 | 79.38d | 0d |  |  |  |
| 36 | 2.8.1.6 | Umowienie terminów z ISP |  | 1d | 2019-11-11 | 2019-11-12 | 35 | 79.38d | 0d |  |  |  |
| 37 | 2.8.1.7 | Podłączenie |  | 2h | 2019-11-12 | 2019-11-12 | 36 | 79.38d |  | Internet |  | 1,500 |
| 38 | 2.8.1.8 | SIEĆ |  | 2d | 2019-11-08 | 2019-11-11 |  | 80d |  | Sprzęt sieciowy |  | 22,000 |
| 39 | 2.8.1.9 | Ocena oraz zatwierdzenie |  | 3h | 2019-11-13 | 2019-11-13 | 32 | 0d |  |  |  |  |
| 40 | 2.8.1.10 | Sporządzenie wykazu sprzętu i materiałów |  | 8h | 2019-11-13 | 2019-11-14 | 39 | 0d |  | Administrator Junior; Pomocnik 2; Pomocnik 3 | 24h | 560 |
| 41 | 2.8.1.11 | Wybór sprzętu oraz mebli biurowych z katalogu |  | 5h | 2019-11-14 | 2019-11-14 | 40 | 0d |  |  |  |  |
| 42 | 2.8.1.12 | Zakup sprzętu do pracowni |  | 5h | 2019-11-15 | 2019-11-15 | 41 | 0d |  | Serwer [300%] |  | 9,000 |
| 43 | 2.8.1.13 | Zakup biurek pod komputery |  | 3h | 2019-11-15 | 2019-11-18 | 33 | 0d |  |  |  |  |
| 44 | 2.8.1.14 | Odbiór sprzętu od dostawcy |  | 2d | 2019-11-15 | 2019-11-19 | 42 | 74.38d |  |  |  |  |
| 45 | 2.8.1.15 | Odbiór mebli od dostawcy |  | 2d | 2019-11-18 | 2019-11-20 | 43 | 0d |  |  |  |  |
| 46 | 2.8.1.16 | **Konfiguracja serwerów** |  | 8d | 2019-11-20 | 2019-12-02 |  | 0d |  |  | 101h | 5,957 |
| 47 | 2.8.1.16.1 | Wniesienie sprzętu do pracowni |  | 3h | 2019-11-20 | 2019-11-20 | 45 | 73.38d |  | Pomocnik 5 | 3h | 36 |
| 48 | 2.8.1.16.2 | Przygotowanie stanowisk dla serwerów |  | 1d | 2019-11-20 | 2019-11-21 | 45 | 0d |  | Administrator Junior; Pomocnik 4 | 16h | 496 |
| 49 | 2.8.1.16.3 | Przygotowanie I konfiguracja serwerów |  | 2d | 2019-11-21 | 2019-11-25 | 48 | 0d |  | Administrator Junior | 16h | 800 |
| 50 | 2.8.1.16.4 | Podłączenie urządzeń do sieci |  | 3h | 2019-11-25 | 2019-11-25 | 49 | 0d |  | Administrator Junior | 3h | 150 |
| 51 | 2.8.1.16.5 | Skonfigurowanie systemow operacyjnych |  | 2h | 2019-11-25 | 2019-11-25 | 50 | 0d |  | Administrator; Administrator Junior | 4h | 340 |
| 52 | 2.8.1.16.6 | Konfiguracja warstwy sieciowej |  | 2h | 2019-11-25 | 2019-11-26 | 51 | 0d |  | Informatyk student | 2h | 50 |
| 53 | 2.8.1.16.7 | Instalacja oprogramowania |  | 5h | 2019-11-26 | 2019-11-26 | 52 | 0d |  | Informatyk student | 5h | 125 |
| 54 | 2.8.1.16.8 | Testowanie poprawności konfiguracji |  | 4h | 2019-11-26 | 2019-11-27 | 53 | 0d |  | Administrator | 4h | 480 |
| 55 | 2.8.1.16.9 | Przygotowanie dokumentacji konfiguracji |  | 3d | 2019-11-27 | 2019-12-02 | 54 | 0d |  | Administrator; Informatyk student | 48h | 3,480 |
| 56 | 2.8.1.16.10 | Pracownia gotowa | milestone | 0d | 2019-12-02 | 2019-12-02 | 55 | 0d |  |  |  |  |

| ID | WBS | Task | Type | Duration | Start | Finish | Predecessors | Total slack | Free slack | Resources | Work | Cost |
| --- | --- | --- | --- | --- | --- | --- | --- | --- | --- | --- | --- | --- |
| 57 | 3 | **Tworzenie platformy www** |  | 149.25d | 2019-05-13 | 2019-12-06 |  | 61.75d |  |  | 944h | 57,560 |
| 58 | 3.1 | Tworzenie planu wymagań dla platformy www |  | 6d | 2019-05-13 | 2019-05-20 |  | 97.5d | 0d |  |  |  |
| 59 | 3.2 | Zatwierdzenie planu |  | 5h | 2019-05-21 | 2019-05-21 | 58 | 97.5d | 0d |  |  |  |
| 60 | 3.3 | Zakup hostingu |  | 30min | 2019-05-21 | 2019-05-21 | 59 | 97.5d | 0d | Hosting [1 rocznie] |  | 120 |
| 61 | 3.4 | Zakup domeny |  | 30min | 2019-05-21 | 2019-05-21 | 60 | 97.5d | 0d | Domena [1 rocznie] |  | 200 |
| 62 | 3.5 | Tworzenie planu strony |  | 5d | 2019-05-21 | 2019-05-28 | 61 | 97.5d | 0d | Administrator; Front-End | 80h | 7,200 |
| 63 | 3.6 | Zatwierdzenie planu strony |  | 2d | 2019-05-28 | 2019-05-30 | 62 | 97.5d | 0d |  |  |  |
| 64 | 3.7 | Stworzenie strony fimy |  | 5d | 2019-05-30 | 2019-06-06 | 63 | 97.5d | 0d | Front-End | 40h | 2,400 |
| 65 | 3.8 | Testowanie funkcjonalności strony |  | 5d | 2019-06-06 | 2019-06-13 | 64 | 97.5d | 0d | Administrator Junior; Pomocnik 4 | 80h | 2,480 |
| 66 | 3.9 | Zatwiedzenie strony |  | 8h | 2019-06-13 | 2019-06-14 | 65 | 97.5d | 0d |  |  |  |
| 67 | 3.10 | Tworzenie aplikacji www |  | 14d | 2019-06-14 | 2019-07-04 | 66 | 97.5d | 0d | Front-End; Programista [250%] | 392h | 29,120 |
| 68 | 3.11 | Testowanie aplikacji |  | 10d | 2019-07-04 | 2019-07-18 | 67 | 97.5d | 0d | Programista Junior; Programista; Informatyk student | 240h | 11,200 |
| 69 | 3.12 | Stworzenie dokumentacji dla aplikacji |  | 3d | 2019-07-18 | 2019-07-23 | 68 | 97.5d |  | Administrator Junior; Informatyk student | 48h | 1,800 |
| 70 | 3.13 | Wdrożenie aplikacji na firmowy serwer |  | 4d | 2019-12-02 | 2019-12-06 | 56, 69FF | 0d |  | Front-End; Programista Junior | 64h | 3,040 |
| 71 | 3.14 | Stworzono platformę | milestone | 0d | 2019-12-06 | 2019-12-06 | 70 | 61.75d |  |  |  |  |
| 72 | 4 | **Oddanie placówki do użytku** |  | 152.25d | 2019-05-13 | 2019-12-11 |  | 58.75d |  |  |  |  |
| 73 | 4.1 | Otwarcie placówki |  | 1d | 2019-05-13 | 2019-05-13 |  | 210d |  |  |  |  |
| 74 | 4.2 | Spotkanie |  | 2h | 2019-05-13 | 2019-05-13 |  | 210.75d |  |  |  |  |
| 75 | 4.3 | Zatrudnienie pracowników |  | 7d | 2019-12-02 | 2019-12-11 | 56 | 58.75d |  |  |  |  |
| 76 | 4.4 | Przygotowanie do szkoleń |  | 14d | 2019-05-13 | 2019-05-30 |  | 165.25d |  |  |  |  |
| 77 | 5 | **SZKOLENIE** |  | 61.75d | 2019-12-06 | 2020-03-02 |  | 0d |  |  | 352h | 8,560 |
| 78 | 5.1 | **ONLINE** |  | 30d | 2019-12-06 | 2020-01-17 |  | 0d |  |  | 112h | 2,800 |
| 79 | 5.1.1 | Rejestacja użytkowników |  | 14d | 2019-12-06 | 2019-12-26 | 70 | 0d |  | Informatyk student | 112h | 2,800 |
| 80 | 5.1.2 | ROZWIĄZYWANIE TESTÓW |  | 30d | 2019-12-06 | 2020-01-17 | 79SS | 0d |  |  |  |  |
| 81 | 5.1.3 | Zakończenie kursów okresowych | milestone | 0d | 2020-01-17 | 2020-01-17 | 80FF | 0d |  |  |  |  |

| ID | WBS | Task | Type | Duration | Start | Finish | Predecessors | Total slack | Resources | Work | Cost |
| --- | --- | --- | --- | --- | --- | --- | --- | --- | --- | --- | --- |
| 82 | 5.2 | **W PLACÓWCE (OFFLINE)** |  | 31.75d | 2020-01-17 | 2020-03-02 |  | 0d |  | 240h | 5,760 |
| 83 | 5.2.1 | Rejestracja w placówce |  | 1d | 2020-01-17 | 2020-01-20 | 76, 81 | 0d |  |  |  |
| 84 | 5.2.2 | Szkolenie na miejscu |  | 30d | 2020-01-20 | 2020-03-02 | 83 | 0d | Szkoleniowiec | 240h | 5,760 |
| 85 | 5.2.3 | Seminarium |  | 4h | 2020-03-02 | 2020-03-02 | 84 | 0d |  |  |  |
| 86 | 5.2.4 | Zakończenie pierwszych kursów | milestone | 0d | 2020-03-02 | 2020-03-02 | 85 | 0d |  |  |  |
| 87 | 5.2.5 | Spotkanie |  | 2h | 2020-03-02 | 2020-03-02 | 86 | 0d |  |  |  |
